# Cronograma Matricula Medicina

How a schedule from MS Project changed from version to version. A marks actual dates.

## Version 1 (saved 2019-05-15)

Note of the change: mind map

| ID | WBS | Task | Duration | Start | Finish | Complete | Total float |
| --- | --- | --- | --- | --- | --- | --- | --- |
| 1 | 1 | **Matricula 15** | 33d? | 2019-04-17 09:00 A | 2019-06-03 18:00 | 23% | 0d |
| 2 | 1.1 | **Gerenciamento do Projeto/Reuniões** | 19.5d | 2019-04-17 09:00 A | 2019-05-15 14:00 | 92% | 0d |
| 3 |  | Reunião: Abertura do projeto/Mapeamento de melhorias | 4h | 2019-04-17 09:00 A | 2019-04-17 14:00 A | 100% |  |
| 4 |  | Produto: Estrutura do Projeto | 16h | 2019-04-18 09:00 A | 2019-04-19 18:00 A | 100% |  |
| 5 |  | Produto: Pacotes de trabalho | 16h | 2019-04-22 09:00 A | 2019-04-23 18:00 A | 100% |  |
| 6 |  | Reunião: Refinamento de pacotes | 4h | 2019-04-24 09:00 A | 2019-04-24 14:00 A | 100% |  |
| 7 |  | Reunião: Planejamento de capacidade | 4h | 2019-05-02 09:00 A | 2019-05-02 14:00 A | 100% |  |
| 8 |  | Reunião: Semestralização dos alunos | 4h | 2019-05-08 09:00 A | 2019-05-08 14:00 A | 100% |  |
| 9 |  | Reunião: Cronograma Geral | 4h | 2019-05-15 09:00 | 2019-05-15 14:00 |  |  |
| 10 | 1.2 | **Suporte de TI** | 1d? | 2019-04-17 09:00 A | 2019-04-17 18:00 | 41% |  |
| 11 |  | Levantamento de implementações para matrícula | 36h | 2019-05-07 09:00 A | 2019-05-13 14:00 A | 100% |  |
| 12 |  | Relatório de avaliação de semestralização | 24h | 2019-05-03 09:00 A | 2019-05-07 18:00 A | 100% |  |
| 13 |  | Relatório de avaliação de notas | 1d? | 2019-04-17 09:00 | 2019-04-17 18:00 |  |  |
| 14 |  | Relatório de avaliação de inadimplência | 1d? | 2019-04-17 09:00 | 2019-04-17 18:00 |  |  |
| 15 |  | Implementações de Pré-matricula | 1d? | 2019-04-17 09:00 | 2019-04-17 18:00 |  |  |
| 16 |  | Implementações de matrícula financeira | 1d? | 2019-04-17 09:00 | 2019-04-17 18:00 |  |  |
| 17 |  | Implementações de matrícula acadêmica | 1d? | 2019-04-17 09:00 | 2019-04-17 18:00 |  |  |
| 18 |  | Especificação de infra - rede e alta disponibilidade | 1d? | 2019-04-17 09:00 | 2019-04-17 18:00 |  |  |
| 19 |  | Especificação de infra - estações | 1d? | 2019-04-17 09:00 | 2019-04-17 18:00 |  |  |
| 20 |  | Especificação de infra - máquinas de cheque (R&W) | 1d? | 2019-04-17 09:00 | 2019-04-17 18:00 |  |  |
| 22 |  | Montagem de equipamentos | 1d? | 2019-04-17 09:00 | 2019-04-17 18:00 |  |  |
| 23 |  | Autenticação do pagamento online | 1d? | 2019-04-17 09:00 | 2019-04-17 18:00 |  |  |
| 24 | 1.3 | **Mapeamento dos processos** | 6d | 2019-04-30 09:00 A | 2019-05-08 18:00 A | 100% |  |
| 25 |  | Modelagem de matrícula e re-matrícula, finaceira e acadêmica | 32h | 2019-04-30 09:00 A | 2019-05-06 18:00 A | 100% |  |
| 26 |  | Processos complementares (fiança, negociação) | 8h | 2019-05-08 09:00 A | 2019-05-08 18:00 A | 100% |  |
| 27 | 1.4 | **Montagem de espaço físico** | 14d? | 2019-05-15 09:00 A | 2019-06-03 18:00 | 3% |  |
| 28 | 1.4.1 | **Escolha de local** | 1h? | 2019-05-15 09:00 | 2019-05-15 10:00 |  |  |
| 29 |  | Matricula financeira de veteranos | 1d? | 2019-05-15 09:00 | 2019-05-15 18:00 |  |  |
| 30 |  | Matrícula acadêmica de veteranos | 1d? | 2019-05-15 09:00 | 2019-05-15 18:00 |  |  |
| 31 |  | Matrícula acadêmica de calouros | 1d? | 2019-05-15 09:00 | 2019-05-15 18:00 |  |  |
| 32 |  | Pendências financeiras | 1d? | 2019-05-15 09:00 | 2019-05-15 18:00 |  |  |
| 33 |  | Pendências acadêmicas | 1d? | 2019-05-15 09:00 | 2019-05-15 18:00 |  |  |
| 34 |  | Recepção | 1d? | 2019-05-15 09:00 | 2019-05-15 18:00 |  |  |
| 35 |  | Revisão de estrutura elétrica | 8h | 2019-05-15 09:00 | 2019-05-15 18:00 |  |  |
| 36 |  | Limpeza e preparação do espaço (somente mobilia) | 8h | 2019-05-15 09:00 | 2019-05-15 18:00 |  |  |
| 37 |  | Especificação da mobilia, equipamentos e materiais para matrícula | 4h | 2019-05-15 09:00 | 2019-05-15 14:00 |  |  |
| 38 |  | Definição de fardamento | 16h | 2019-05-15 09:00 | 2019-05-16 18:00 |  |  |
| 39 |  | Recepção, serviços e opções de conforto | 8h | 2019-05-15 09:00 A | 2019-05-15 18:00 | 50% |  |
| 40 |  | Instalação para matricula | 24h | 2019-05-15 09:00 | 2019-05-17 18:00 |  |  |
| 41 | 1.5 | **Seleção e capacitação da equipe** | 14d? | 2019-05-15 09:00 | 2019-06-03 18:00 |  |  |
| 42 |  | Homologação de matricula financeira presencial (simulação no Lyceum) | 36h | 2019-05-15 09:00 | 2019-05-21 14:00 |  |  |
| 43 |  | Homologação de matrícula acadêmica presencial (simulação no Lyceum) | 36h | 2019-05-15 09:00 | 2019-05-21 14:00 |  |  |
| 44 |  | Definição das estratégias de constituição de equipes de matricula | 2h | 2019-05-15 09:00 | 2019-05-15 11:00 |  |  |
| 45 |  | Seleção e contratação de líderes e responsáveis pelo processo | 2h | 2019-05-15 09:00 | 2019-05-15 11:00 |  |  |
| 46 |  | Seleção e contratação de equipe de atendimento presencial | 8h | 2019-05-15 09:00 | 2019-05-15 18:00 |  |  |
| 47 |  | Montagem/Documentação de scripts de atendimento | 4h | 2019-05-15 09:00 | 2019-05-15 14:00 |  |  |
| 48 |  | Estruturação de turnos de trabalho | 1h | 2019-05-15 09:00 | 2019-05-15 10:00 |  |  |
| 49 |  | Capacitação - Postura e valores da instituição | 6h | 2019-05-15 09:00 | 2019-05-15 16:00 |  |  |
| 50 |  | Capacitação - Processos, sistema e equipamentos | 8h | 2019-05-15 09:00 | 2019-05-15 18:00 |  |  |
| 51 | 1.6 | **Estratégia de comunição** | 14d | 2019-05-15 09:00 | 2019-06-03 18:00 |  |  |
| 52 |  | Elaboração de manual para aluno | 24h | 2019-05-15 09:00 | 2019-05-17 18:00 |  |  |
| 53 |  | Elaboração de manual de treinamento para equipe | 32h | 2019-05-15 09:00 | 2019-05-20 18:00 |  |  |
| 54 |  | Planejamento de mídia | 1d | 2019-05-15 09:00 | 2019-05-15 18:00 |  |  |
| 55 |  | Levantamento pendências | 16h | 2019-05-15 09:00 | 2019-05-16 18:00 |  |  |
| 56 |  | Comunicação de pendências | 1d | 2019-05-15 09:00 | 2019-05-15 18:00 |  |  |
| 57 |  | Levantamento de valores | 1d | 2019-05-15 09:00 | 2019-05-15 18:00 |  |  |
| 58 |  | Comunicação de valores | 1d | 2019-05-15 09:00 | 2019-05-15 18:00 |  |  |
| 59 |  | Plano de comunicação (contatos de responsáveis) | 1d | 2019-05-15 09:00 | 2019-05-15 18:00 |  |  |
| 60 |  | Definição de glossário de termos para a Matrícula | 8h | 2019-05-15 09:00 | 2019-05-15 18:00 |  |  |
| 61 |  | Gravação de video institucional | 1d | 2019-05-15 09:00 | 2019-05-15 18:00 |  |  |
| 62 | 1.7 | **Homologação** | 23d | 2019-05-02 09:00 | 2019-06-03 18:00 |  |  |
| 63 |  | Aprovação de novos fluxos | 16h | 2019-05-02 09:00 | 2019-05-03 18:00 |  |  |
| 64 |  | Validação de funcionalidades - sistema | 1d | 2019-05-02 09:00 | 2019-05-02 18:00 |  |  |
| 65 |  | Validação de funcionalidades - portal | 1d | 2019-05-02 09:00 | 2019-05-02 18:00 |  |  |
| 66 |  | Simulação para cada cenário/modalidade de matrícula | 1d | 2019-05-02 09:00 | 2019-05-02 18:00 |  |  |
| 67 | 1.8 | **Planejamento** | 6d | 2019-05-08 09:00 A | 2019-05-15 18:00 | 11% |  |
| 68 |  | Definição do cronograma | 8h | 2019-05-08 09:00 | 2019-05-08 18:00 |  |  |
| 69 |  | Estimativa do contingente de alunos por modalidade | 1h | 2019-05-08 09:00 A | 2019-05-08 10:00 A | 100% |  |
| 70 |  | Dimensionamento da capacidade de atendimento | 1h | 2019-05-08 09:00 A | 2019-05-08 10:00 A | 100% |  |
| 71 |  | Mapa de escalonamento | 1d | 2019-05-08 09:00 | 2019-05-08 18:00 |  |  |

| ID | WBS | Task | Duration | Start | Finish |
| --- | --- | --- | --- | --- | --- |
| 72 | 1.9 | **Mobilização de recursos** | 14d? | 2019-05-15 09:00 | 2019-06-03 18:00 |
| 73 |  | Mobilia/facilities | 1d | 2019-05-15 09:00 | 2019-05-15 18:00 |
| 74 |  | Infra tecnologica | 1d | 2019-05-15 09:00 | 2019-05-15 18:00 |
| 75 |  | Material de divulgação | 1d | 2019-05-15 09:00 | 2019-05-15 18:00 |
| 76 |  | Contingência para fornecimento de energia elétrica | 1d? | 2019-05-15 09:00 | 2019-05-15 18:00 |

## Version 2 (saved 2019-05-20)

Note of the change: Mapa

Last finish stays 2019-06-03.

Changed:

| ID | Task | Complete | Other |
| --- | --- | --- | --- |
| 10 | **Suporte de TI** | 41% → 43% |  |
| 50 | **Estratégia de comunicação** |  | was named Estratégia de comunição |
